# DA - Business Plan Template

How a schedule from MS Project changed from version to version. A marks actual dates.

## Version 1 (saved 2022-11-07, file DA - Business Plan Template.mpt)

| ID | WBS | Task | Duration | Start | Finish | Predecessors | Total float | Constraint |
| --- | --- | --- | --- | --- | --- | --- | --- | --- |
| 1 | 1 | **New Business** | 594d | 2023-01-17 | 2025-04-27 |  | 0d |  |
| 2 | 1.1 | **Phase 1 - Strategic Plan** | 25d | 2024-11-07 | 2024-12-11 |  | 0d |  |
| 3 |  | Self-Assessment | 2d | 2024-11-07 | 2024-11-09 |  | 120d | finish no earlier than 2024-11-09 |
| 4 |  | Define business vision | 1d | 2024-11-11 | 2024-11-11 | 3 | 0d |  |
| 5 |  | Identify available skills, information and support | 1d | 2024-11-08 | 2024-11-08 | 4FS-3d | 120d | start no earlier than 2024-11-08 |
| 6 |  | Decide whether to proceed | 1d | 2024-11-18 | 2024-11-18 | 5FS+5d | 0d |  |
| 7 | 1.1.5 | **Define the Opportunity** | 20d | 2024-11-12 | 2024-12-09 |  | 99d |  |
| 8 |  | Research the market and competition | 11d | 2024-11-19 | 2024-12-03 | 6 | 99d | finish no earlier than 2024-11-10 |
| 9 |  | Interview owners of similar businesses | 5d | 2024-11-12 | 2024-11-18 |  | 113d |  |
| 10 |  | Identify needed resources | 4d | 2024-12-04 | 2024-12-09 | 8 | 99d | finish no earlier than 2024-11-21 |
| 11 |  | Identify operating cost elements | 1d | 2024-11-22 | 2024-11-23 | 9 | 110d | finish no earlier than 2024-11-23 |
| 12 | 1.1.6 | **Evaluate Business Approach** | 25d | 2024-11-07 | 2024-12-11 |  | 0d |  |
| 13 |  | Define new entity requirements | 1d | 2024-12-10 | 2024-12-10 | 10 | 0d |  |
| 14 |  | Identify on-going business purchase opportunities | 1d | 2024-11-07 | 2024-11-07 |  | 0d |  |
| 15 |  | Research franchise possibilities | 1d | 2024-12-11 | 2024-12-11 | 13 | 0d | start no earlier than 2024-11-28 |
| 16 |  | Summarize business approach | 1d | 2024-11-29 | 2024-11-29 | 14 | 0d | start no earlier than 2024-11-29 |
| 17 | 1.2 | **Evaluate Potential Risks and Rewards** | 32d | 2024-11-29 | 2025-01-13 |  | 0d |  |
| 18 |  | Assess market size and stability | 4d | 2024-12-12 | 2024-12-17 | 12 | 0d | finish no earlier than 2024-11-28 |
| 19 |  | Estimate the competition | 1d | 2024-11-29 | 2024-11-29 |  | 0d | start no earlier than 2024-11-29 |
| 20 |  | Assess needed resource availability | 2d | 2024-12-18 | 2024-12-19 | 18 | 0d | finish no earlier than 2024-12-01 |
| 21 |  | Evaluate realistic initial market share | 1d | 2024-12-02 | 2024-12-02 | 19 | 0d | start no earlier than 2024-12-02 |
| 22 |  | Determine financial requirements | 2d | 2024-12-12 | 2024-12-13 | 15 | 0d | finish no earlier than 2024-12-01 |
| 23 |  | Review personal suitability | 1d | 2024-12-03 | 2024-12-03 | 21 | 0d | start no earlier than 2024-12-02 |
| 24 |  | Evaluate initial profitability | 1d | 2024-12-05 | 2024-12-05 |  | 0d | start no earlier than 2024-12-05 |
| 25 |  | Review and modify the strategic plan | 1d | 2024-12-06 | 2024-12-07 | 23 | 0d | finish no earlier than 2024-12-07 |
| 26 |  | Confirm decision to proceed | 0d | 2024-12-07 | 2024-12-07 | 24 | 0d | finish no earlier than 2024-12-07 |
| 27 | 1.2.10 | **Phase 2 - Define the Business Opportunity** | 26d | 2024-12-09 | 2025-01-13 |  | 0d |  |
| 28 | 1.2.10.1 | **Define the Market** | 14d | 2024-12-09 | 2024-12-26 |  | 0d |  |
| 29 |  | Access available information | 1d | 2024-12-09 | 2024-12-09 | 25 | 99d | finish no earlier than 2024-12-08 |
| 30 |  | Create market analysis plan | 4d | 2024-12-09 | 2024-12-12 |  | 0d | finish no earlier than 2024-12-12 |
| 31 |  | Implement market analysis plan | 5d | 2024-12-13 | 2024-12-19 | 29 | 0d | start no earlier than 2024-12-13 |
| 32 |  | Identify competition | 1d | 2024-12-20 | 2024-12-21 | 30 | 0d | finish no earlier than 2024-12-21 |
| 33 |  | Summarize the market | 1d | 2024-12-23 | 2024-12-23 | 31 | 0d | finish no earlier than 2024-12-23 |
| 34 |  | Identify target market niche | 1d | 2024-12-26 | 2024-12-26 | 32 | 86d | start no earlier than 2024-12-26 |
| 35 | 1.2.10.2 | **Identify Needed Materials and Supplies** | 6d | 2024-12-27 | 2025-01-04 |  | 0d |  |
| 36 |  | Select a business approach (from "Evaluate Business Approach" above) | 1d | 2024-12-27 | 2024-12-28 | 28SS, 33 | 85d | finish no earlier than 2024-12-28 |
| 37 |  | Identify management staff resources | 1d | 2024-12-27 | 2024-12-29 |  | 85d | finish no earlier than 2024-12-29 |
| 38 |  | Identify staffing requirements | 1d | 2024-12-30 | 2024-12-30 | 36 | 0d | start no earlier than 2024-12-30 |
| 39 |  | Identify needed raw materials | 1d | 2025-01-02 | 2025-01-02 | 37 | 0d | start no earlier than 2025-01-02 |
| 40 |  | Identify needed utilities | 1d | 2025-01-03 | 2025-01-03 | 38 | 0d | start no earlier than 2025-01-03 |
| 41 |  | Summarize operating expenses and financial projections | 1d | 2025-01-03 | 2025-01-04 | 39 | 80d | finish no earlier than 2025-01-04 |
| 42 | 1.2.10.3 | **Evaluate Potential Risks and Rewards** | 6d | 2025-01-06 | 2025-01-13 |  | 0d |  |
| 43 |  | Assess market size and stability | 1d | 2025-01-06 | 2025-01-06 | 40 | 0d | finish no earlier than 2025-01-06 |
| 44 |  | Assess needed resources availability | 2d | 2025-01-09 | 2025-01-10 |  | 0d | start no earlier than 2025-01-09 |
| 45 |  | Forecast financial returns | 2d | 2025-01-09 | 2025-01-12 | 43 | 0d | finish no earlier than 2025-01-12 |
| 46 |  | Review and modify the business opportunity | 1d | 2025-01-13 | 2025-01-13 | 44 | 0d | finish no earlier than 2025-01-13 |
| 47 |  | Confirm decision to proceed | 0d | 2025-01-13 | 2025-01-13 | 45 | 74d | finish no earlier than 2025-01-13 |
| 48 | 1.3 | **Phase 3 - Plan for Action** | 594d | 2023-01-17 | 2025-04-27 |  | 0d |  |
| 49 | 1.3.1 | **Develop Detailed 5-Year Business Plan** | 543d | 2023-01-17 | 2025-02-13 |  | 0d |  |
| 50 |  | Describe the vision and opportunity | 1d | 2025-01-14 | 2025-01-14 | 46 | 71d | finish no earlier than 2023-01-16 |
| 51 |  | List assumptions | 1d | 2023-01-17 | 2023-01-17 |  | 592d | finish no earlier than 2023-01-17 |
| 52 |  | Describe the market | 1d | 2025-01-15 | 2025-01-15 | 50 | 71d | finish no earlier than 2023-01-18 |
| 53 |  | Describe the new business | 1d | 2023-01-19 | 2023-01-19 | 51 | 591d | finish no earlier than 2023-01-19 |
| 54 |  | Describe strengths, weaknesses, assets and threats | 1d | 2025-01-16 | 2025-01-16 | 52 | 71d | finish no earlier than 2023-01-20 |
| 55 |  | Estimate sales volume during startup period | 1d | 2023-01-23 | 2023-01-23 | 53 | 0d | finish no earlier than 2023-01-23 |
| 56 |  | Forecast operating costs | 1d | 2025-01-17 | 2025-01-17 | 54 | 0d | finish no earlier than 2023-01-24 |
| 57 |  | Establish pricing strategy | 1d | 2023-01-25 | 2023-01-25 | 55 | 0d | finish no earlier than 2023-01-25 |
| 58 |  | Forecast revenue | 1d | 2025-01-20 | 2025-01-20 | 56 | 0d | finish no earlier than 2023-01-26 |
| 59 |  | Summarize pro-forma financial statement | 2d | 2023-01-27 | 2023-01-30 | 57 | 0d | finish no earlier than 2023-01-30 |
| 60 |  | Develop break-even analysis | 1d | 2025-01-21 | 2025-01-21 | 58 | 64d | finish no earlier than 2023-01-31 |
| 61 |  | Develop cash-flow projection | 1d | 2023-02-01 | 2023-02-01 | 59 | 554d | finish no earlier than 2023-02-01 |
| 62 |  | Identify licensing and permitting requirements | 1d | 2025-01-22 | 2025-01-22 | 60 | 64d | finish no earlier than 2023-02-02 |
| 63 |  | Develop startup plan | 2d | 2023-02-03 | 2023-02-06 | 61 | 553d | finish no earlier than 2023-02-06 |
| 64 |  | Develop sales and marketing strategy | 1d | 2025-01-23 | 2025-01-23 | 62 | 64d | finish no earlier than 2023-02-07 |
| 65 |  | Develop distribution structure | 1d | 2023-02-08 | 2023-02-08 | 63 | 552d | finish no earlier than 2023-02-08 |
| 66 |  | Describe risks and opportunities | 1d | 2025-02-10 | 2025-02-10 | 64 | 53d | finish no earlier than 2025-02-10 |
| 67 |  | Publish the business plan | 1d | 2025-02-13 | 2025-02-13 | 65 | 27d | start no earlier than 2025-02-13 |
| 68 |  | Confirm decision to proceed | 1d | 2025-02-13 | 2025-02-13 | 66 | 51d | finish no earlier than 2025-02-13 |
| 69 | 1.3.2 | **Phase 4 - Proceed With Startup Plan** | 1d | 2025-02-14 | 2025-02-14 |  | 27d |  |
| 70 |  | Choose a location | 1d | 2025-02-14 | 2025-02-14 | 67 | 27d | start no earlier than 2025-02-14 |

| ID | WBS | Task | Duration | Start | Finish | Predecessors | Total float | Constraint |
| --- | --- | --- | --- | --- | --- | --- | --- | --- |
| 71 | 1.3.3 | **Establish Business Structure** | 1d | 2025-02-17 | 2025-02-17 |  | 27d |  |
| 72 | 1.3.3.1 | **Choose a Name** | 1d | 2025-02-17 | 2025-02-17 | 69 | 27d |  |
| 73 |  | Identify implications | 1d | 2025-02-17 | 2025-02-17 |  | 27d | finish no earlier than 2025-02-15 |
| 74 |  | Research name availability | 1d | 2025-02-17 | 2025-02-17 |  | 49d | finish no earlier than 2025-02-16 |
| 75 | 1.3.4 | **Choose a Bank** | 9d | 2025-02-18 | 2025-03-02 |  | 16d |  |
| 76 |  | Establish accounts | 5d | 2025-02-18 | 2025-02-24 | 73 | 27d | finish no earlier than 2025-02-22 |
| 77 |  | Establish line of credit | 1d | 2025-02-21 | 2025-02-23 |  | 13d | finish no earlier than 2025-02-23 |
| 78 |  | Choose legal representation | 1d | 2025-02-25 | 2025-02-25 | 76 | 27d | start no earlier than 2025-02-24 |
| 79 |  | Select business tax-basis category | 2d | 2025-02-27 | 2025-02-28 | 77 | 10d | start no earlier than 2025-02-27 |
| 80 |  | Choose capital funding source | 2d | 2025-02-27 | 2025-03-02 | 78 | 26d | finish no earlier than 2025-03-02 |
| 81 |  | Commit capital funding | 0d | 2025-03-02 | 2025-03-02 | 79 | 40d | finish no earlier than 2025-03-02 |
| 82 | 1.3.5 | **Establish the Operating Control Base** | 14d | 2025-03-03 | 2025-03-20 |  | 26d |  |
| 83 |  | Choose and set up the accounting system | 4d | 2025-03-03 | 2025-03-06 | 79, 80 | 26d | finish no earlier than 2025-03-06 |
| 84 |  | Obtain required licenses and permits | 2d | 2025-03-07 | 2025-03-10 |  | 30d | finish no earlier than 2025-03-10 |
| 85 |  | Obtain needed insurance | 2d | 2025-03-13 | 2025-03-16 | 83 | 22d | finish no earlier than 2025-03-16 |
| 86 |  | Establish security plan | 4d | 2025-03-17 | 2025-03-20 | 84 | 26d | finish no earlier than 2025-03-20 |
| 87 | 1.3.6 | **Develop Marketing Program** | 5d | 2025-02-17 | 2025-02-21 |  | 41d |  |
| 88 |  | Establish an advertising program | 1d | 2025-02-17 | 2025-02-17 | 73SS | 48d | finish no earlier than 2025-02-17 |
| 89 |  | Develop a logo | 1d | 2025-02-20 | 2025-02-20 |  | 38d | start no earlier than 2025-02-20 |
| 90 |  | Order promotional materials | 1d | 2025-02-21 | 2025-02-21 | 88 | 45d | start no earlier than 2025-02-21 |
| 91 | 1.3.7 | **Provide Physical Facilities** | 15d | 2025-03-21 | 2025-04-10 |  | 11d |  |
| 92 |  | Secure operation space | 5d | 2025-03-21 | 2025-03-27 | 85, 89 | 18d | start no earlier than 2025-03-21 |
| 93 |  | Select computer network hardware | 1d | 2025-03-28 | 2025-03-28 |  | 15d | start no earlier than 2025-03-28 |
| 94 |  | Select computer software | 1d | 2025-03-28 | 2025-03-29 | 92 | 18d | finish no earlier than 2025-03-29 |
| 95 |  | Establish utilities | 4d | 2025-03-31 | 2025-04-03 | 93 | 15d | finish no earlier than 2025-04-03 |
| 96 |  | Provide furniture and equipment | 2d | 2025-04-04 | 2025-04-07 | 94 | 14d | finish no earlier than 2025-04-07 |
| 97 |  | Move in | 1d | 2025-04-10 | 2025-04-10 | 95 | 11d | start no earlier than 2025-04-10 |
| 98 | 1.3.8 | **Provide Staffing** | 40d | 2025-03-03 | 2025-04-27 |  | 0d |  |
| 99 |  | Interview and test candidates | 15d | 2025-03-03 | 2025-03-22 | 79 | 10d | finish no earlier than 2025-03-22 |
| 100 |  | Hire staff | 10d | 2025-03-24 | 2025-04-05 |  | 15d | finish no earlier than 2025-04-05 |
| 101 |  | Train staff | 15d | 2025-04-07 | 2025-04-27 | 99 | 0d | finish no earlier than 2025-04-27 |
| 102 |  | Start up the business | 0d | 2025-04-27 | 2025-04-27 | 96, 100 | 0d | finish no earlier than 2025-04-27 |

## Version 2 (data date 2024-11-14, saved 2022-11-07, file DA - New Business Plan - Complete.mpp)

Last finish stays 2025-04-27. Complete tasks 0 → 22.

Changed:

| ID | Task | Start | Finish | Duration | Complete | Total float | Other |
| --- | --- | --- | --- | --- | --- | --- | --- |
| 1 | **New Business** | 2023-01-17 A |  |  | 0% → 26% |  |  |
| 2 | **Phase 1 - Strategic Plan** | 2024-11-07 A |  |  | 0% → 45% | 0d → 97d |  |
| 3 | Self-Assessment | 2024-11-07 A | 2024-11-09 → 2024-11-08 A (-1d) |  | 0% → 100% | 120d → none | constraint finish no earlier than 2024-11-09 → none |
| 4 | Define business vision | 2024-11-11 A | 2024-11-11 A |  | 0% → 100% | 0d → none |  |
| 5 | Identify available skills, information and support | 2024-11-08 A | 2024-11-08 A |  | 0% → 100% | 120d → none | constraint start no earlier than 2024-11-08 → none |
| 6 | Decide whether to proceed | 2024-11-18 A | 2024-11-18 A |  | 0% → 100% | 0d → none |  |
| 7 | **Define the Opportunity** | 2024-11-12 → 2024-11-14 A (+2d) |  | 20d → 18d | 0% → 20% |  |  |
| 9 | Interview owners of similar businesses | 2024-11-12 → 2024-11-14 A (+2d) | 2024-11-18 → 2024-11-19 A (+1d) | 5d → 4d | 0% → 100% | 113d → none |  |
| 12 | **Evaluate Business Approach** | 2024-11-07 A | 2024-12-11 A |  | 0% → 100% | 0d → none |  |
| 13 | Define new entity requirements | 2024-12-10 A | 2024-12-10 A |  | 0% → 100% | 0d → none |  |
| 14 | Identify on-going business purchase opportunities | 2024-11-07 A | 2024-11-07 A |  | 0% → 100% | 0d → none |  |
| 15 | Research franchise possibilities | 2024-12-11 A | 2024-12-11 A |  | 0% → 100% | 0d → none |  |
| 16 | Summarize business approach | 2024-11-29 A | 2024-11-29 A |  | 0% → 100% | 0d → none |  |
| 17 | **Evaluate Potential Risks and Rewards** | 2024-11-29 A |  |  | 0% → 67% | 0d → 74d |  |
| 18 | Assess market size and stability | 2024-12-12 A |  |  | 0% → 50% | 0d → 93d |  |
| 19 | Estimate the competition | 2024-11-29 A |  |  | 0% → 50% | 0d → 0.5d |  |
| 20 | Assess needed resource availability | 2024-12-18 A | 2024-12-19 A |  | 0% → 100% | 0d → none |  |
| 21 | Evaluate realistic initial market share | 2024-12-02 A |  |  | 0% → 50% | 0d → 0.5d |  |
| 22 | Determine financial requirements | 2024-12-12 A |  |  | 0% → 50% | 0d → 95d |  |
| 23 | Review personal suitability | 2024-12-03 A |  |  | 0% → 50% | 0d → 2.5d |  |
| 24 | Evaluate initial profitability | 2024-12-05 A |  |  | 0% → 50% | 0d → 101d |  |
| 25 | Review and modify the strategic plan | 2024-12-06 A |  |  | 0% → 50% | 0d → 99d |  |
| 26 | Confirm decision to proceed | 2024-12-07 A |  |  | 0% → 50% | 0d → 100d |  |
| 27 | **Phase 2 - Define the Business Opportunity** | 2024-12-09 A |  |  | 0% → 72% | 0d → 74d |  |
| 28 | **Define the Market** | 2024-12-09 A |  |  | 0% → 85% | 0d → 86d |  |
| 30 | Create market analysis plan | 2024-12-09 A | 2024-12-12 A |  | 0% → 100% | 0d → none |  |
| 31 | Implement market analysis plan | 2024-12-13 A | 2024-12-19 A |  | 0% → 100% | 0d → none |  |
| 32 | Identify competition | 2024-12-20 A | 2024-12-21 A |  | 0% → 100% | 0d → none |  |
| 33 | Summarize the market | 2024-12-23 A | 2024-12-23 A |  | 0% → 100% | 0d → none |  |
| 35 | **Identify Needed Materials and Supplies** | 2024-12-27 A |  |  | 0% → 50% | 0d → 80d |  |
| 38 | Identify staffing requirements | 2024-12-30 A | 2024-12-30 A |  | 0% → 100% | 0d → none |  |
| 39 | Identify needed raw materials | 2025-01-02 A | 2025-01-02 A |  | 0% → 100% | 0d → none |  |
| 40 | Identify needed utilities | 2025-01-03 A | 2025-01-03 A |  | 0% → 100% | 0d → none |  |
| 42 | **Evaluate Potential Risks and Rewards** | 2025-01-06 A |  |  | 0% → 67% | 0d → 74d |  |
| 43 | Assess market size and stability | 2025-01-06 A |  |  | 0% → 25% | 0d → 3.5d |  |
| 44 | Assess needed resources availability | 2025-01-09 A |  |  | 0% → 75% | 0d → 0.75d |  |
| 45 | Forecast financial returns | 2025-01-09 A |  |  | 0% → 75% | 0d → 75d |  |
| 46 | Review and modify the business opportunity | 2025-01-13 A |  |  | 0% → 75% | 0d → 71d |  |
| 48 | **Phase 3 - Plan for Action** | 2023-01-17 A |  |  | 0% → 6% |  |  |
| 49 | **Develop Detailed 5-Year Business Plan** | 2023-01-17 A |  |  | 0% → 29% | 0d → 51d |  |
| 55 | Estimate sales volume during startup period | 2023-01-23 A | 2023-01-23 A |  | 0% → 100% | 0d → none |  |
| 56 | Forecast operating costs | 2025-01-17 A | 2025-01-17 A |  | 0% → 100% | 0d → none |  |
| 57 | Establish pricing strategy | 2023-01-25 A | 2023-01-25 A |  | 0% → 100% | 0d → none |  |
| 58 | Forecast revenue | 2025-01-20 A | 2025-01-20 A |  | 0% → 100% | 0d → none |  |
| 59 | Summarize pro-forma financial statement | 2023-01-27 A | 2023-01-30 A |  | 0% → 100% | 0d → none |  |
