# Web Site 16

How a schedule from MS Project changed from version to version. A marks actual dates.

## Version 1 (data date 2016-07-08, saved 2016-08-03, file SimonSezIT_NFF_Web_Site_18-Start.mpp)

Note of the change: resources

| ID | WBS | Task | Duration | Start | Finish | Predecessors | Complete | Total float |
| --- | --- | --- | --- | --- | --- | --- | --- | --- |
| 2 |  | Tendering process, contract | 50d | 2016-02-01 A | 2016-04-11 A |  | 100% |  |
| 4 | 2 | **Requirements** | 65d | 2016-04-11 A | 2016-07-11 A | 2 | 100% |  |
| 5 |  | Requirements definition | 65d | 2016-04-11 A | 2016-07-11 A |  | 100% |  |
| 6 |  | Requirement signoff | 0d | 2016-07-11 A | 2016-07-11 A | 5 | 100% |  |
| 8 | 3 | **Design and Development** | 70d | 2016-05-09 A | 2016-08-15 |  | 49% | 53.5d |
| 9 | 3.1 | **Analysis and Design** | 51d | 2016-05-09 A | 2016-07-19 |  | 75% | 72.5d |
| 10 |  | Analysis and Design | 51d | 2016-05-09 A | 2016-07-19 | 5SS+20d | 75% | 72.5d |
| 11 |  | Design signoff | 0d | 2016-07-19 | 2016-07-19 | 10 |  | 72.5d |
| 13 | 3.2 | **Development** | 40d | 2016-06-20 A | 2016-08-15 |  | 34% | 53.5d |
| 14 |  | Graphical resources and branding | 30d | 2016-06-20 A | 2016-08-01 | 5SS+20d, 10SS+30d | 50% | 63.5d |
| 15 |  | Database implementation | 25d | 2016-07-04 A | 2016-08-08 | 10SS+40d | 25% | 58.5d |
| 16 |  | HTML etc. | 30d | 2016-07-04 A | 2016-08-15 | 10SS+40d | 25% | 53.5d |
| 18 | 4 | **Testing** | 63.5d | 2016-07-18 | 2016-10-13 |  |  | 0d |
| 19 |  | Test script | 25d | 2016-07-18 | 2016-08-22 | 10SS+50d |  | 0d |
| 20 |  | Testing | 37.5d | 2016-08-23 | 2016-10-13 | 19SS+26d |  | 0d |
| 21 |  | User Testing | 15d | 2016-09-06 | 2016-09-27 | 20SS+10d |  | 12.5d |
| 22 |  | Acceptance | 0d | 2016-10-13 | 2016-10-13 | 20, 21 |  | 0d |
| 24 |  | Live implementation | 10d | 2016-10-13 | 2016-10-27 | 18 |  | 0d |
| 25 |  | Go live | 0d | 2016-10-27 | 2016-10-27 | 24 |  | 0d |

## Version 2 (data date 2023-07-09, saved 2023-04-03, file SimonSezIT_NFF_Web_Site_19-Start.mpp)

Note of the change: resources

Last finish 2016-10-27 → 2023-10-30 (+2559d).

Changed:

| ID | Task | Start | Finish | Other |
| --- | --- | --- | --- | --- |
| 2 | Tendering process, contract | 2016-02-01 A → 2023-02-01 A (+2557d) | 2016-04-11 A → 2023-04-12 A (+2557d) | resources Toby Arnott [5%]; Contract Consultant → Deborah Ashby [5%]; Contract Consultant |
| 4 | **Requirements** | 2016-04-11 A → 2023-04-12 A (+2557d) | 2016-07-11 A → 2023-07-12 A (+2557d) |  |
| 5 | Requirements definition | 2016-04-11 A → 2023-04-12 A (+2557d) | 2016-07-11 A → 2023-07-12 A (+2557d) | resources Northern Farm Foods [40%]; Toby Arnott [30%] → Northern Farm Foods [40%]; Deborah Ashby [30%] |
| 6 | Requirement signoff | 2016-07-11 A → 2023-07-12 A (+2557d) | 2016-07-11 A → 2023-07-12 A (+2557d) |  |
| 8 | **Design and Development** | 2016-05-09 A → 2023-05-10 A (+2557d) | 2016-08-15 → 2023-08-16 (+2557d) |  |
| 9 | **Analysis and Design** | 2016-05-09 A → 2023-05-10 A (+2557d) | 2016-07-19 → 2023-07-20 (+2557d) |  |
| 10 | Analysis and Design | 2016-05-09 A → 2023-05-10 A (+2557d) | 2016-07-19 → 2023-07-20 (+2557d) |  |
| 11 | Design signoff | 2016-07-19 → 2023-07-20 (+2557d) | 2016-07-19 → 2023-07-20 (+2557d) |  |
| 13 | **Development** | 2016-06-20 A → 2023-06-21 A (+2557d) | 2016-08-15 → 2023-08-16 (+2557d) |  |
| 14 | Graphical resources and branding | 2016-06-20 A → 2023-06-21 A (+2557d) | 2016-08-01 → 2023-08-02 (+2557d) |  |
| 15 | Database implementation | 2016-07-04 A → 2023-07-05 A (+2557d) | 2016-08-08 → 2023-08-09 (+2557d) |  |
| 16 | HTML etc. | 2016-07-04 A → 2023-07-05 A (+2557d) | 2016-08-15 → 2023-08-16 (+2557d) |  |
| 18 | **Testing** | 2016-07-18 → 2023-07-19 (+2557d) | 2016-10-13 → 2023-10-16 (+2559d) |  |
| 19 | Test script | 2016-07-18 → 2023-07-19 (+2557d) | 2016-08-22 → 2023-08-23 (+2557d) | resources Toby Arnott [10%]; Lorraine Reese [50%]; bakersfield associates [20%] → Deborah Ashby [10%]; Lorraine Reese [50%]; bakersfield associates [20%] |
| 20 | Testing | 2016-08-23 → 2023-08-24 (+2557d) | 2016-10-13 → 2023-10-16 (+2559d) | resources Northern Farm Foods [25%]; Toby Arnott [25%]; bakersfield associates [50%] → Northern Farm Foods [25%]; Deborah Ashby [25%]; bakersfield associates [50%] |
| 21 | User Testing | 2016-09-06 → 2023-09-07 (+2557d) | 2016-09-27 → 2023-09-28 (+2557d) |  |
| 22 | Acceptance | 2016-10-13 → 2023-10-16 (+2559d) | 2016-10-13 → 2023-10-16 (+2559d) |  |
| 24 | Live implementation | 2016-10-13 → 2023-10-16 (+2559d) | 2016-10-27 → 2023-10-30 (+2559d) |  |
| 25 | Go live | 2016-10-27 → 2023-10-30 (+2559d) | 2016-10-27 → 2023-10-30 (+2559d) |  |

## Version 3 (data date 2023-07-23, saved 2023-04-03, file SimonSezIT_NFF_Web_Site_19-Complete.mpp)

Note of the change: resources

Last finish stays 2023-10-30.

Changed:

| ID | Task | Other |
| --- | --- | --- |
| 18 | **Testing** | baseline finish 2016-10-17 → 2023-09-28 |
| 21 | User Testing | baseline start 2016-09-06 → 2023-09-07; baseline finish 2016-09-27 → 2023-09-28 |
