# Web Site 06

How a schedule from MS Project changed from version to version. A marks actual dates.

## Version 1 (data date 2016-06-23, saved 2016-08-03, file SimonSezIT_NFF_Web_Site_06.mpp)

Note of the change: resources

| ID | WBS | Task | Duration | Start | Finish | Predecessors | Complete | Total float | Constraint |
| --- | --- | --- | --- | --- | --- | --- | --- | --- | --- |
| 2 |  | Tendering process, contract | 50d | 2016-02-01 A | 2016-04-11 A |  | 100% |  |  |
| 4 | 2 | **Requirements** | 65d | 2016-04-11 A | 2016-07-11 | 2 | 69% | 80.88d |  |
| 5 |  | Requirements definition | 65d | 2016-04-11 A | 2016-07-11 |  | 69% | 78.5d |  |
| 6 |  | Requirement signoff | 0d | 2016-07-11 | 2016-07-11 | 5 |  | 80.88d |  |
| 8 | 3 | **Design and Development** | 70d | 2016-05-09 A | 2016-08-15 |  | 30% | 53.5d |  |
| 9 | 3.1 | **Analysis and Design** | 51d | 2016-05-09 A | 2016-07-19 |  | 66% | 72.5d |  |
| 10 |  | Analysis and Design | 51d | 2016-05-09 A | 2016-07-19 | 5SS+20d | 66% | 72.5d | finish no earlier than 2016-02-02 |
| 11 |  | Design signoff | 0d | 2016-07-19 | 2016-07-19 | 10 |  | 72.5d |  |
| 13 | 3.2 | **Development** | 40d | 2016-06-20 A | 2016-08-15 |  | 9% | 53.5d |  |
| 14 |  | Graphical resources and branding | 30d | 2016-06-20 A | 2016-08-01 | 5SS+20d, 10SS+30d | 25% | 63.5d |  |
| 15 |  | Database implementation | 25d | 2016-07-04 | 2016-08-08 | 10SS+40d |  | 58.5d |  |
| 16 |  | HTML etc. | 30d | 2016-07-04 | 2016-08-15 | 10SS+40d |  | 53.5d |  |
| 18 | 4 | **Testing** | 63.5d | 2016-07-18 | 2016-10-13 |  |  | 0d |  |
| 19 |  | Test script | 25d | 2016-07-18 | 2016-08-22 | 10SS+50d |  | 0d |  |
| 20 |  | Testing | 37.5d | 2016-08-23 | 2016-10-13 | 19SS+26d |  | 0d |  |
| 21 |  | Acceptance | 0d | 2016-10-13 | 2016-10-13 | 20 |  | 0d |  |
| 23 |  | Live implementation | 10d | 2016-10-13 | 2016-10-27 | 18 |  | 0d |  |
| 24 |  | Go live | 0d | 2016-10-27 | 2016-10-27 | 23 |  | 0d |  |

## Version 2 (data date 2023-06-24, saved 2023-03-25, file SimonSezIT_NFF_Web_Site_06-Start.mpp)

Note of the change: resources

Last finish 2016-10-27 → 2023-11-16 (+2576d).

Changed:

| ID | Task | Start | Finish | Duration | Total float | Other |
| --- | --- | --- | --- | --- | --- | --- |
| 2 | Tendering process, contract | 2016-02-01 A → 2023-02-01 A (+2557d) | 2016-04-11 A → 2023-04-12 A (+2557d) |  |  | resources Toby Arnott [5%]; Contract Consultant → Deborah Ashby [5%]; Contract Consultant |
| 4 | **Requirements** | 2016-04-11 A → 2023-04-12 A (+2557d) | 2016-07-11 → 2023-07-12 (+2557d) |  | 80.88d → 91d |  |
| 5 | Requirements definition | 2016-04-11 A → 2023-04-12 A (+2557d) | 2016-07-11 → 2023-07-12 (+2557d) |  | 78.5d → 91d | resources Northern Farm Foods [40%]; Toby Arnott [30%] → Northern Farm Foods [40%]; Deborah Ashby [30%] |
| 6 | Requirement signoff | 2016-07-11 → 2023-07-12 (+2557d) | 2016-07-11 → 2023-07-12 (+2557d) |  | 80.88d → 91d |  |
| 8 | **Design and Development** | 2016-05-09 A → 2023-05-10 A (+2557d) | 2016-08-15 → 2023-08-16 (+2557d) |  | 53.5d → 66d |  |
| 9 | **Analysis and Design** | 2016-05-09 A → 2023-05-10 A (+2557d) | 2016-07-19 → 2023-07-20 (+2557d) |  | 72.5d → 85d |  |
| 10 | Analysis and Design | 2016-05-09 A → 2023-05-10 A (+2557d) | 2016-07-19 → 2023-07-20 (+2557d) |  | 72.5d → 85d | constraint finish no earlier than 2016-02-02 → finish no earlier than 2023-02-02 |
| 11 | Design signoff | 2016-07-19 → 2023-07-20 (+2557d) | 2016-07-19 → 2023-07-20 (+2557d) |  | 72.5d → 85d |  |
| 13 | **Development** | 2016-06-20 A → 2023-06-21 A (+2557d) | 2016-08-15 → 2023-08-16 (+2557d) |  | 53.5d → 66d |  |
| 14 | Graphical resources and branding | 2016-06-20 A → 2023-06-21 A (+2557d) | 2016-08-01 → 2023-08-02 (+2557d) |  | 63.5d → 76d |  |
| 15 | Database implementation | 2016-07-04 → 2023-07-05 (+2557d) | 2016-08-08 → 2023-08-09 (+2557d) |  | 58.5d → 71d |  |
| 16 | HTML etc. | 2016-07-04 → 2023-07-05 (+2557d) | 2016-08-15 → 2023-08-16 (+2557d) |  | 53.5d → 66d |  |
| 18 | **Testing** | 2016-07-18 → 2023-07-19 (+2557d) | 2016-10-13 → 2023-11-02 (+2576d) | 63.5d → 76d |  |  |
| 19 | Test script | 2016-07-18 → 2023-07-19 (+2557d) | 2016-08-22 → 2023-08-23 (+2557d) |  |  | resources Toby Arnott [10%]; Lorraine Reese [50%]; bakersfield associates [20%] → Deborah Ashby [10%]; Lorraine Reese [50%]; bakersfield associates [20%] |
| 20 | Testing | 2016-08-23 → 2023-08-24 (+2557d) | 2016-10-13 → 2023-11-02 (+2576d) | 37.5d → 50d |  | resources Northern Farm Foods [25%]; Toby Arnott [25%]; bakersfield associates [50%] → Northern Farm Foods [25%]; Deborah Ashby [25%]; bakersfield associates [50%] |
| 21 | Acceptance | 2016-10-13 → 2023-11-02 (+2576d) | 2016-10-13 → 2023-11-02 (+2576d) |  |  |  |
| 23 | Live implementation | 2016-10-13 → 2023-11-02 (+2576d) | 2016-10-27 → 2023-11-16 (+2576d) |  |  |  |
| 24 | Go live | 2016-10-27 → 2023-11-16 (+2576d) | 2016-10-27 → 2023-11-16 (+2576d) |  |  |  |
