# Project 2023 Advanced Exercise 08

How a schedule from MS Project changed from version to version. A marks actual dates.

## Version 1 (data date 2023-07-09, saved 2023-04-03, file SimonSezIT_Project2023Advanced_Exercise_08.mpp)

Note of the change: resources

| ID | WBS | Task | Duration | Start | Finish | Predecessors | Complete | Total float |
| --- | --- | --- | --- | --- | --- | --- | --- | --- |
| 2 |  | Tendering process, contract | 50d | 2023-02-01 A | 2023-04-12 A |  | 100% |  |
| 4 | 2 | **Requirements** | 65d | 2023-04-12 A | 2023-07-12 A | 2 | 100% |  |
| 5 |  | Requirements definition | 65d | 2023-04-12 A | 2023-07-12 A |  | 100% |  |
| 6 |  | Requirement signoff | 0d | 2023-07-12 A | 2023-07-12 A | 5 | 100% |  |
| 8 | 3 | **Design and Development** | 70d | 2023-05-10 A | 2023-08-16 |  | 49% | 53.5d |
| 9 | 3.1 | **Analysis and Design** | 51d | 2023-05-10 A | 2023-07-20 |  | 75% | 72.5d |
| 10 |  | Analysis and Design | 51d | 2023-05-10 A | 2023-07-20 | 5SS+20d | 75% | 72.5d |
| 11 |  | Design signoff | 0d | 2023-07-20 | 2023-07-20 | 10 |  | 72.5d |
| 13 | 3.2 | **Development** | 40d | 2023-06-21 A | 2023-08-16 |  | 34% | 53.5d |
| 14 |  | Graphical resources and branding | 30d | 2023-06-21 A | 2023-08-02 | 5SS+20d, 10SS+30d | 50% | 63.5d |
| 15 |  | Database implementation | 25d | 2023-07-05 A | 2023-08-09 | 10SS+40d | 25% | 58.5d |
| 16 |  | HTML etc. | 30d | 2023-07-05 A | 2023-08-16 | 10SS+40d | 25% | 53.5d |
| 18 | 4 | **Testing** | 63.5d | 2023-07-19 | 2023-10-16 |  |  | 0d |
| 19 |  | Test script | 25d | 2023-07-19 | 2023-08-23 | 10SS+50d |  | 0d |
| 20 |  | Testing | 37.5d | 2023-08-24 | 2023-10-16 | 19SS+26d |  | 0d |
| 21 |  | User Testing | 15d | 2023-09-07 | 2023-09-28 | 20SS+10d |  | 12.5d |
| 22 |  | Acceptance | 0d | 2023-10-16 | 2023-10-16 | 20, 21 |  | 0d |
| 24 |  | Live implementation | 10d | 2023-10-16 | 2023-10-30 | 18 |  | 0d |
| 25 |  | Go live | 0d | 2023-10-30 | 2023-10-30 | 24 |  | 0d |

## Version 2 (data date 2023-08-06, saved 2023-04-03, file SimonSezIT_Project2023Advanced_Exercise_08_Answer.mpp)

Note of the change: resources

Last finish 2023-10-30 → 2023-09-19 (-41d). Complete tasks 3 → 9.

Changed:

| ID | Task | Start | Finish | Duration | Complete | Total float | Predecessors | Other |
| --- | --- | --- | --- | --- | --- | --- | --- | --- |
| 8 | **Design and Development** |  | 2023-08-16 → 2023-08-03 A (-13d) | 70d → 61d | 49% → 100% | 53.5d → none |  | baseline finish 2023-08-16 → 2023-08-03 |
| 9 | **Analysis and Design** |  | 2023-07-20 → 2023-07-11 A (-9d) | 51d → 44.62d | 75% → 100% | 72.5d → none |  | baseline finish 2023-07-20 → 2023-07-11 |
| 10 | Analysis and Design |  | 2023-07-20 → 2023-07-11 A (-9d) | 51d → 44.62d | 75% → 100% | 72.5d → none | 5SS+20d → 5SS+15d | resources Northern Farm Foods [25%]; bakersfield associates [25%]; Sally Danvers [25%] → Northern Farm Foods [50%]; bakersfield associates [50%]; Sally Danvers [50%]; baseline finish 2023-07-20 → 2023-07-11 |
| 11 | Design signoff | 2023-07-20 → 2023-07-10 A (-10d) | 2023-07-20 → 2023-07-10 A (-10d) |  | 0% → 100% | 72.5d → none |  | baseline start 2023-07-20 → 2023-07-10; baseline finish 2023-07-20 → 2023-07-10 |
| 13 | **Development** |  | 2023-08-16 → 2023-08-03 A (-13d) | 40d → 31d | 34% → 100% | 53.5d → none |  | baseline finish 2023-08-16 → 2023-08-03 |
| 14 | Graphical resources and branding |  | 2023-08-02 → 2023-07-21 A (-12d) | 30d → 22.5d | 50% → 100% | 63.5d → none | 5SS+20d, 10SS+30d → 5SS+15d, 10SS+30d | resources bakersfield associates [25%] → bakersfield associates [50%]; baseline finish 2023-08-02 → 2023-07-21 |
| 15 | Database implementation |  | 2023-08-09 → 2023-07-26 A (-14d) | 25d → 15.62d | 25% → 100% | 58.5d → none | 10SS+40d → 10SS+35d | resources Adrian Hasgill [25%]; People4People [25%] → Adrian Hasgill [50%]; People4People [50%]; baseline finish 2023-08-09 → 2023-07-26 |
| 16 | HTML etc. |  | 2023-08-16 → 2023-08-03 A (-13d) | 30d → 21d | 25% → 100% | 53.5d → none | 10SS+40d → 10SS+35d | resources Mark Ravenswood [50%] → Mark Ravenswood; baseline finish 2023-08-16 → 2023-08-03 |
| 18 | **Testing** | 2023-07-19 → 2023-07-12 A (-7d) | 2023-10-16 → 2023-09-05 (-41d) | 63.5d → 39.75d | 0% → 36% |  |  | baseline start 2023-07-19 → 2023-07-12; baseline finish 2023-10-16 → 2023-09-05 |
| 19 | Test script | 2023-07-19 → 2023-07-12 A (-7d) | 2023-08-23 → 2023-08-02 A (-21d) | 25d → 15d | 0% → 100% | 0d → none | 10SS+50d → 10SS+45d | resources Deborah Ashby [10%]; Lorraine Reese [50%]; bakersfield associates [20%] → Deborah Ashby [20%]; Lorraine Reese; bakersfield associates [40%]; baseline start 2023-07-19 → 2023-07-12; baseline finish 2023-08-23 → 2023-08-02 |
| 20 | Testing | 2023-08-24 → 2023-08-10 (-14d) | 2023-10-16 → 2023-09-05 (-41d) | 37.5d → 18.75d |  |  | 19SS+26d → 19SS+21d | resources Northern Farm Foods [25%]; Deborah Ashby [25%]; bakersfield associates [50%] → Northern Farm Foods [50%]; Deborah Ashby [50%]; bakersfield associates; baseline start 2023-08-24 → 2023-08-10; baseline finish 2023-10-16 → 2023-09-05 |
| 21 | User Testing | 2023-09-07 → 2023-08-17 (-21d) | 2023-09-28 → 2023-08-28 (-31d) | 15d → 7.5d |  | 12.5d → 6.25d | 20SS+10d → 20SS+5d | resources Northern Farm Foods [50%] → Northern Farm Foods; baseline start 2023-09-07 → 2023-08-17; baseline finish 2023-09-28 → 2023-08-28 |
| 22 | Acceptance | 2023-10-16 → 2023-09-05 (-41d) | 2023-10-16 → 2023-09-05 (-41d) |  |  |  |  | baseline start 2023-10-16 → 2023-09-05; baseline finish 2023-10-16 → 2023-09-05 |
| 24 | Live implementation | 2023-10-16 → 2023-09-05 (-41d) | 2023-10-30 → 2023-09-19 (-41d) |  |  |  |  | baseline start 2023-10-16 → 2023-09-05; baseline finish 2023-10-30 → 2023-09-19 |
| 25 | Go live | 2023-10-30 → 2023-09-19 (-41d) | 2023-10-30 → 2023-09-19 (-41d) |  |  |  |  | baseline start 2023-10-30 → 2023-09-19; baseline finish 2023-10-30 → 2023-09-19 |
